# Apollo Java框架总体开发计划

Schedule from MS Project, 2017-02-06 to 2017-04-24, A marks actual dates.
Microsoft

## Calendars

- 标准: Mon-Fri 08:00-12:00, 13:00-17:00; Sat-Sun off. Exceptions (off unless hours are given): 2017-04-01 08:00-12:00, 13:00-17:00 (清明假期调休), 2017-04-03 to 2017-04-04 (清明假期).

## Resources

| Resource |
| --- |
| 蔡佑杰 |
| 蔡晓桦 |
| 管理人员 |
| 刘协雍 |
| 许剑刚 |
| 李晓越 |
| 技术支持组 |
| 测试人员 |
| 待定 |

## Schedule

| ID | WBS | Task | Type | Duration | Start | Finish | Complete | Remaining | Total slack | Resources | Work | Actual work |
| --- | --- | --- | --- | --- | --- | --- | --- | --- | --- | --- | --- | --- |
| 1 | 1 | **1、立项阶段** |  | 24.5d | 2017-02-06 A | 2017-03-10 A | 100% |  |  |  | 196h | 196h |
| 2 | 1.1 | 1.1、项目总体规划 | manual | 5d | 2017-02-06 A | 2017-02-10 A | 100% |  |  | 管理人员; 技术支持组 | 40h | 40h |
| 3 | 1.2 | 1.2、前期技术预言、资源信息整合 | manual | 17d | 2017-02-13 A | 2017-03-07 A | 100% |  |  | 技术支持组 | 136h | 136h |
| 4 | 1.3 | 1.3、项目范围与技术选型确定 | manual | 1d | 2017-03-08 A | 2017-03-08 A | 100% |  |  | 技术支持组 | 8h | 8h |
| 5 | 1.4 | 1.4、制定总体开发计划 | manual | 1.5d | 2017-03-09 A | 2017-03-10 A | 100% |  |  | 蔡佑杰 | 12h | 12h |
| 6 | 1.5 | 1.5、立项阶段完成 | milestone, manual | 0.5d | 2017-03-10 A | 2017-03-10 A | 100% |  |  |  |  |  |
| 7 | 2 | **2、构建阶段（迭代一）** |  | 29d | 2017-03-09 A | 2017-04-19 | 66% | 9.94d | 3d |  | 428h | 276h |
| 8 | 2.1 | **2.1、研发工作计划** |  | 29d | 2017-03-09 A | 2017-04-19 | 74% | 7.48d |  |  | 372h | 276h |
| 9 | 2.1.1 | **2.1.1、Apollo框架（apolloFramework）** |  | 24d | 2017-03-09 A | 2017-04-12 | 88% | 2.87d | 0d |  | 268h | 236h |
| 10 | 2.1.1.1 | 2.1.1.1、工程搭建 | manual | 0.5d | 2017-03-09 A | 2017-03-09 A | 100% |  |  | 蔡佑杰 | 4h | 4h |
| 11 | 2.1.1.2 | **2.1.1.2、常用工具类封装（Utils）** |  | 7d | 2017-03-13 A | 2017-03-21 A | 100% |  |  |  | 56h | 56h |
| 12 | 2.1.1.2.1 | 2.1.1.2.1、日期时间工具类 | manual | 1d | 2017-03-13 A | 2017-03-13 A | 100% |  |  | 蔡佑杰 | 8h | 8h |
| 13 | 2.1.1.2.2 | 2.1.1.2.2、文件操作工具类（含文件操作、解压缩、加密解密等） | manual | 1.5d | 2017-03-14 A | 2017-03-15 A | 100% |  |  | 蔡佑杰 | 12h | 12h |
| 14 | 2.1.1.2.3 | 2.1.1.2.3、Spring ApplicationContext工具类 | manual | 0.2d | 2017-03-15 A | 2017-03-15 A | 100% |  |  | 蔡佑杰 | 1.6h | 1.6h |
| 15 | 2.1.1.2.4 | 2.1.1.2.4、Properties工具类 | manual | 0.3d | 2017-03-15 A | 2017-03-15 A | 100% |  |  | 蔡佑杰 | 2.4h | 2.4h |
| 16 | 2.1.1.2.5 | 2.1.1.2.5、对象操作相关工具类（含类型转换、类型判断等） | manual | 1d | 2017-03-16 A | 2017-03-16 A | 100% |  |  | 蔡佑杰 | 8h | 8h |
| 17 | 2.1.1.2.6 | 2.1.1.2.6、Excel操作工具类 | manual | 1d | 2017-03-17 A | 2017-03-17 A | 100% |  |  | 蔡佑杰 | 8h | 8h |
| 18 | 2.1.1.2.7 | 2.1.1.2.7、动态数据库连接工具类 | manual | 1d | 2017-03-20 A | 2017-03-20 A | 100% |  |  | 蔡佑杰 | 8h | 8h |
| 19 | 2.1.1.2.8 | 2.1.1.2.8、实体验证工具类 | manual | 1d | 2017-03-21 A | 2017-03-21 A | 100% |  |  | 蔡佑杰 | 8h | 8h |
| 20 | 2.1.1.3 | **2.1.1.3、Web自定义标签（Web.Tag）封装** |  | 8.5d | 2017-03-13 A | 2017-03-23 A | 100% |  |  |  | 68h | 68h |
| 21 | 2.1.1.3.1 | 2.1.1.3.1、标签基类（AbstractTag） | manual | 1d | 2017-03-13 A | 2017-03-13 A | 100% |  |  | 蔡晓桦 | 8h | 8h |
| 22 | 2.1.1.3.2 | 2.1.1.3.2、普通文本（文本型、整数型、小数型）、多行文本输入控件 | manual | 2d | 2017-03-14 A | 2017-03-15 A | 100% |  |  | 蔡晓桦 | 16h | 16h |
| 23 | 2.1.1.3.3 | 2.1.1.3.3、下拉DropDownListTag、下拉多选MultDropDownListTag控件 | manual | 2d | 2017-03-16 A | 2017-03-17 A | 100% |  |  | 蔡晓桦 | 16h | 16h |
| 24 | 2.1.1.3.4 | 2.1.1.3.4、AutoCompleteTag、AutoDropDownListTag | manual | 1d | 2017-03-20 A | 2017-03-20 A | 100% |  |  | 蔡晓桦 | 8h | 8h |
| 25 | 2.1.1.3.5 | 2.1.1.3.5、日期控件DatePickerTag、DateTimePickerTag | manual | 0.5d | 2017-03-21 A | 2017-03-21 A | 100% |  |  | 蔡晓桦 | 4h | 4h |
| 26 | 2.1.1.3.6 | 2.1.1.3.6、多选控件CheckBoxTag、CheckBoxListTag | manual | 0.5d | 2017-03-21 A | 2017-03-21 A | 100% |  |  | 蔡晓桦 | 4h | 4h |
| 27 | 2.1.1.3.7 | 2.1.1.3.7、单选控件RadioButtonTag | manual | 0.5d | 2017-03-22 A | 2017-03-22 A | 100% |  |  | 蔡晓桦 | 4h | 4h |
| 28 | 2.1.1.3.8 | 2.1.1.3.8、导航栏控件ToolBarTag | manual | 0.5d | 2017-03-22 A | 2017-03-22 A | 100% |  |  | 蔡晓桦 | 4h | 4h |
| 29 | 2.1.1.3.9 | 2.1.1.3.9、按钮控件ButtonTag | manual | 0.5d | 2017-03-23 A | 2017-03-23 A | 100% |  |  | 蔡晓桦 | 4h | 4h |

| ID | WBS | Task | Type | Duration | Start | Finish | Complete | Actual start | Actual finish | Total slack | Constraint | Resources | Work | Actual work |
| --- | --- | --- | --- | --- | --- | --- | --- | --- | --- | --- | --- | --- | --- | --- |
| 30 | 2.1.1.4 | **2.1.1.4、上下文封装** |  | 1.5d | 2017-03-22 A | 2017-03-23 A | 100% |  |  |  |  |  | 12h | 12h |
| 31 | 2.1.1.4.1 | 2.1.1.4.1、当前信息、系统信息对象 | manual | 0.2d | 2017-03-22 A | 2017-03-22 A | 100% |  |  |  |  | 蔡佑杰 | 1.6h | 1.6h |
| 32 | 2.1.1.4.2 | 2.1.1.4.2、用户信息对象 | manual | 0.2d | 2017-03-22 A | 2017-03-22 A | 100% |  |  |  |  | 蔡佑杰 | 1.6h | 1.6h |
| 33 | 2.1.1.4.3 | 2.1.1.4.3、机构信息对象 | manual | 0.2d | 2017-03-22 A | 2017-03-22 A | 100% |  |  |  |  | 蔡佑杰 | 1.6h | 1.6h |
| 34 | 2.1.1.4.4 | 2.1.1.4.4、权限信息对象 | manual | 0.2d | 2017-03-22 A | 2017-03-22 A | 100% |  |  |  |  | 蔡佑杰 | 1.6h | 1.6h |
| 35 | 2.1.1.4.5 | 2.1.1.4.5、菜单功能信息对象 | manual | 0.2d | 2017-03-22 A | 2017-03-22 A | 100% |  |  |  |  | 蔡佑杰 | 1.6h | 1.6h |
| 36 | 2.1.1.4.6 | 2.1.1.4.6、数据库连接信息、变量信息对象 | manual | 0.5d | 2017-03-23 A | 2017-03-23 A | 100% |  |  |  |  | 蔡佑杰 | 4h | 4h |
| 37 | 2.1.1.5 | **2.1.1.5、Base实体封装（Entity）** |  | 2d | 2017-03-24 A | 2017-03-27 A | 100% |  |  |  |  |  | 16h | 16h |
| 38 | 2.1.1.5.1 | 2.1.1.5.1、Base实体对象 | manual | 0.5d | 2017-03-24 A | 2017-03-24 A | 100% |  |  |  |  | 蔡佑杰 | 4h | 4h |
| 39 | 2.1.1.5.2 | 2.1.1.5.2、Base实体操作帮助类 | manual | 1.5d | 2017-03-24 A | 2017-03-27 A | 100% |  |  |  | start no earlier than 2017-03-24 | 蔡佑杰 | 12h | 12h |
| 40 | 2.1.1.6 | **2.1.1.6、缓存封装（Cache）** |  | 2d | 2017-03-28 A | 2017-03-29 A | 100% |  |  |  |  |  | 16h | 16h |
| 41 | 2.1.1.6.1 | 2.1.1.6.1、MemCache操作封装 | manual | 2d | 2017-03-28 A | 2017-03-29 A | 100% |  |  |  |  | 蔡佑杰 | 16h | 16h |
| 42 | 2.1.1.7 | **2.1.1.7、Base类封装（Web.Base）** |  | 3d | 2017-03-30 A | 2017-04-01 A | 100% |  |  |  |  |  | 24h | 24h |
| 43 | 2.1.1.7.1 | 2.1.1.7.1、BaseController封装 | manual | 0.5d | 2017-03-30 A | 2017-03-30 A | 100% |  |  |  |  | 蔡佑杰 | 4h | 4h |
| 44 | 2.1.1.7.2 | 2.1.1.7.2、BaseService封装 | manual | 1.5d | 2017-03-30 A | 2017-03-31 A | 100% |  |  |  |  | 蔡佑杰 | 12h | 12h |
| 45 | 2.1.1.7.3 | 2.1.1.7.3、BaseDao封装（含mybtis封装） | manual | 1d | 2017-04-01 A | 2017-04-01 A | 100% |  |  |  |  | 蔡佑杰 | 8h | 8h |
| 46 | 2.1.1.8 | **2.1.1.8、公共代码库封装（PublicCode）** |  | 3d | 2017-04-05 | 2017-04-07 | 100% | 2017-03-24 | 2017-03-28 |  |  |  | 24h | 24h |
| 47 | 2.1.1.8.1 | 2.1.1.8.1、公共代码库接口实现类 | manual | 2d | 2017-03-24 A | 2017-03-27 A | 100% |  |  |  |  | 蔡晓桦 | 16h | 16h |
| 48 | 2.1.1.8.2 | 2.1.1.8.2、公共代码Code-Name映射 | manual | 1d | 2017-03-28 A | 2017-03-28 A | 100% |  |  |  |  | 蔡晓桦 | 8h | 8h |
| 49 | 2.1.1.9 | **2.1.1.9、异常处理封装（Exception）** |  | 2d | 2017-04-05 A | 2017-04-06 A | 100% |  |  |  |  |  | 16h | 16h |
| 50 | 2.1.1.9.1 | 2.1.1.9.1、封装各种异常，组装模板并调用接口（发邮件） | manual | 2d | 2017-04-05 A | 2017-04-06 A | 100% |  |  |  |  | 蔡佑杰 | 16h | 16h |
| 51 | 2.1.1.10 | **2.1.1.10、日志封装（Logger）** |  | 4d | 2017-04-07 | 2017-04-12 |  |  |  | 0d |  |  | 32h |  |
| 52 | 2.1.1.10.1 | 2.1.1.10.1、日志实体对象、日志组件帮助类等 | manual | 2d | 2017-04-07 | 2017-04-10 |  |  |  |  |  | 蔡佑杰 | 16h |  |
| 53 | 2.1.1.10.2 | 2.1.1.10.4、操作类日志记录封装 | manual | 1d | 2017-04-11 | 2017-04-11 |  |  |  |  |  | 蔡佑杰 | 8h |  |
| 54 | 2.1.1.10.3 | 2.1.1.10.5、数据类日志记录封装 | manual | 1d | 2017-04-12 | 2017-04-12 |  |  |  |  |  | 蔡佑杰 | 8h |  |

| ID | WBS | Task | Type | Duration | Start | Finish | Predecessors | Complete | Remaining | Total slack | Constraint | Resources | Work | Actual work |
| --- | --- | --- | --- | --- | --- | --- | --- | --- | --- | --- | --- | --- | --- | --- |
| 55 | 2.1.2 | **2.1.2、Apollo网站（apolloWeb）** |  | 2d | 2017-03-31 A | 2017-04-01 A |  | 100% |  |  |  |  | 16h | 16h |
| 56 | 2.1.2.1 | 2.1.2.1、工程搭建，与apolloFramework整合 | manual | 0.5d | 2017-03-31 A | 2017-03-31 A |  | 100% |  |  |  | 蔡晓桦 | 4h | 4h |
| 57 | 2.1.2.2 | 2.1.2.2、登录页面 | manual | 0.5d | 2017-03-31 A | 2017-03-31 A |  | 100% |  |  |  | 蔡晓桦 | 4h | 4h |
| 58 | 2.1.2.3 | 2.1.2.3、系统权限相关API（与业务系统Shrio整合） | manual | 1d | 2017-04-01 A | 2017-04-01 A |  | 100% |  |  |  | 蔡晓桦 | 8h | 8h |
| 59 | 2.1.3 | **2.1.3、Apollo演示网站（sjgDemo）** |  | 6d | 2017-04-05 A | 2017-04-12 |  | 50% | 3d | 0d |  |  | 48h | 24h |
| 60 | 2.1.3.1 | 2.1.3.1、工程搭建，与apolloFramework、aplloWeb整合 | manual | 1d | 2017-04-05 A | 2017-04-05 A |  | 100% |  |  |  | 蔡晓桦 | 8h | 8h |
| 61 | 2.1.3.2 | **2.1.3.2、示例模块** |  | 5d | 2017-04-06 A | 2017-04-12 |  | 40% | 3d | 0d |  |  | 40h | 16h |
| 62 | 2.1.3.2.1 | 2.1.3.2.1、单表查询页面 | manual | 1d | 2017-04-06 A | 2017-04-06 A |  | 100% |  |  |  | 蔡晓桦 | 8h | 8h |
| 63 | 2.1.3.2.2 | 2.1.3.2.2、单表详情页面 | manual | 1d | 2017-04-07 A | 2017-04-07 A |  | 100% |  |  |  | 蔡晓桦 | 8h | 8h |
| 64 | 2.1.3.2.3 | 2.1.3.2.3、父子表查询页面 | manual | 0.5d | 2017-04-10 | 2017-04-10 |  |  |  |  |  | 蔡晓桦 | 4h |  |
| 65 | 2.1.3.2.4 | 2.1.3.2.4、表头表体详情页面 | manual | 1.5d | 2017-04-10 | 2017-04-11 |  |  |  |  |  | 蔡晓桦 | 12h |  |
| 66 | 2.1.3.2.5 | 3.1.3.2.5、导入导出示例页面 | manual | 1d | 2017-04-12 | 2017-04-12 |  |  |  |  |  | 蔡晓桦 | 8h |  |
| 67 | 2.1.4 | **2.1.4、代码生成工具** |  | 5d | 2017-04-13 | 2017-04-19 |  |  |  |  |  |  | 40h |  |
| 68 | 2.1.4.1 | 2.1.4.1、讨论模板 |  | 1d | 2017-04-13 | 2017-04-13 | 65 |  |  | 7d | start no earlier than 2017-04-13 | 技术支持组 | 8h |  |
| 69 | 2.1.4.2 | 2.1.5.2、编写脚本 | manual | 4d | 2017-04-14 | 2017-04-19 |  |  |  |  |  | 刘协雍 | 32h |  |
| 70 | 2.2 | **2.2、文档编制计划** |  | 4d | 2017-04-14 | 2017-04-19 |  |  |  | 0d |  |  | 56h |  |
| 71 | 2.2.1 | 2.2.1、Apollo Java框架开发手册 | manual | 2d | 2017-04-18 | 2017-04-19 |  |  |  |  |  | 蔡佑杰; 蔡晓桦 | 32h |  |
| 72 | 2.2.2 | 2.2.2、Java编码规范 | manual | 2d | 2017-04-14 | 2017-04-17 |  |  |  |  |  | 蔡佑杰 | 16h |  |
| 73 | 2.2.3 | 2.2.3、JSP编码规范 | manual | 1d | 2017-04-17 | 2017-04-17 |  |  |  |  |  | 蔡晓桦 | 8h |  |
| 75 | 3 | **2.3、迭代一阶段完成** |  | 1d? | 2017-03-09 | 2017-03-09 |  |  |  |  |  |  |  |  |
| 76 | 3.1 | **3.1、研发工作计划** |  | 1d? | 2017-03-09 | 2017-03-09 |  |  |  |  |  |  |  |  |
| 77 | 3.1.1 | **3.1.1、Apollo框架（apolloFramework）** |  | 4d? | 2017-03-09 | 2017-03-14 |  |  |  |  |  |  |  |  |
| 78 | 3.1.1.1 | **3.1.1.1、日志封装（Logger）** |  | 1d? | 2017-03-09 | 2017-03-09 |  |  |  |  |  |  |  |  |
| 79 | 3.1.1.1.1 | 3.1.1.1.1、RabbitMQ日志方式封装 | manual | 2d | 2017-03-09 | 2017-03-10 |  |  |  |  |  |  |  |  |
| 80 | 3.1.1.1.2 | 3.1.1.1.2、MongoDB日志方式封装 | manual | 2d | 2017-03-09 | 2017-03-10 |  |  |  |  |  |  |  |  |

| ID | WBS | Task | Type | Duration | Start | Finish |
| --- | --- | --- | --- | --- | --- | --- |
| 81 | 3.1.2 | **3.1.2、Apollo网站（apolloWeb）** |  | 16d? | 2017-03-09 | 2017-03-30 |
| 82 | 3.1.2.1 | **3.1.2.3、系统管理模块** |  | 16d? | 2017-03-09 | 2017-03-30 |
| 83 | 3.1.2.1.1 | 3.1.2.3.1、功能管理 | manual | 2.5d? | 2017-03-09 | 2017-03-13 |
| 84 | 3.1.2.1.2 | 3.1.2.3.2、企业维护 | manual | 2d? | 2017-03-09 | 2017-03-10 |
| 85 | 3.1.2.1.3 | 3.1.2.3.3、企业授权 | manual | 2d? | 2017-03-09 | 2017-03-10 |
| 86 | 3.1.2.1.4 | 3.1.2.3.4、企业数据库维护 | manual | 2d? | 2017-03-09 | 2017-03-10 |
| 87 | 3.1.2.1.5 | 3.1.2.3.5、角色管理 | manual | 2d? | 2017-03-09 | 2017-03-10 |
| 88 | 3.1.2.1.6 | 3.1.2.3.6、角色功能设定 | manual | 2d? | 2017-03-09 | 2017-03-10 |
| 89 | 3.1.2.1.7 | 3.1.2.3.7、用户管理 | manual | 2d? | 2017-03-09 | 2017-03-10 |
| 90 | 3.1.2.1.8 | 3.1.2.3.8、用户角色设定 | manual | 2d? | 2017-03-09 | 2017-03-10 |
| 91 | 3.1.2.1.9 | 3.1.2.3.9、用户权限设定 | manual | 2d? | 2017-03-09 | 2017-03-10 |
| 92 | 3.1.3 | **3.1.3、导入导出服务** |  | 7d? | 2017-03-09 | 2017-03-17 |
| 93 | 3.1.3.1 | **3.1.3.1、详细设计（与.NET版本统一设计）** |  | 5d? | 2017-03-09 | 2017-03-15 |
| 94 | 3.1.3.1.1 | 3.1.3.1.1、编写导入导出详细设计 | manual | 4d | 2017-03-09 | 2017-03-14 |
| 95 | 3.1.3.1.2 | 3.1.3.1.2、详细设计评审 | manual | 0.5d | 2017-03-09 | 2017-03-09 |
| 96 | 3.1.3.1.3 | 3.1.3.1.3、根据评审结果修改设计 | manual | 0.5d | 2017-03-09 | 2017-03-09 |
| 97 | 3.1.3.2 | **3.1.3.2、功能开发** |  | 7d? | 2017-03-09 | 2017-03-17 |
| 98 | 3.1.3.2.1 | 3.1.3.2.1、导入服务 | manual | 6d | 2017-03-09 | 2017-03-16 |
| 99 | 3.1.3.2.2 | 3.1.3.2.2、导出服务 | manual | 5d | 2017-03-09 | 2017-03-15 |
| 100 | 3.2 | **3.2、测试工作计划** |  | 32d? | 2017-03-09 | 2017-04-24 |
| 101 | 3.2.1 | **3.2.1、单元测试** |  | 5d? | 2017-03-09 | 2017-03-15 |
| 102 | 3.2.1.1 | 3.2.1.1、编写Apollo框架单元测试用例 | manual | 5d? | 2017-03-09 | 2017-03-15 |
| 103 | 3.2.2 | **3.2.2、系统测试** |  | 31d? | 2017-03-09 | 2017-04-21 |
| 104 | 3.2.2.1 | 3.2.2.1、编写测试用例 | manual | 7d? | 2017-03-09 | 2017-03-17 |
| 105 | 3.2.2.2 | 3.2.2.2、测试用例评审 | manual | 1d? | 2017-03-09 | 2017-03-09 |
| 106 | 3.2.2.3 | 3.2.2.2、系统功能测试 | manual | 17d? | 2017-03-09 | 2017-03-31 |
| 107 | 3.2.2.4 | 3.2.2.3、根据测试结果修改代码 | manual | 10d? | 2017-03-09 | 2017-03-22 |
| 108 | 3.2.2.5 | 3.2.2.4、系统回归测试 | manual | 7d? | 2017-03-09 | 2017-03-17 |
| 109 | 3.2.3 | 3.2.3、发布版本 | milestone, manual | 1d? | 2017-03-09 | 2017-03-09 |
